# Dokumentation_Projects

How a schedule from MS Project changed from version to version. A marks actual dates.

## Version 1 (saved 2026-06-11)

| ID | Task | Duration | Start | Finish | Predecessors |
| --- | --- | --- | --- | --- | --- |
| 1 | Projektidee fixiert | 5d | 2026-02-13 | 2026-02-19 |  |
| 2 | Einrichtung von GitHUB | 1d | 2026-02-13 | 2026-02-13 | 1 |
| 3 | Kommunikatoinsverzeichnis erstellen | 7d | 2026-02-13 | 2026-02-23 | 1 |
| 4 | Pflichtenheft erstellen | 6d | 2026-02-20 | 2026-02-27 | 3 |
| 5 | Projektanalyse durchführen | 6d | 2026-02-27 | 2026-03-06 | 4 |
| 6 | Produktstrukturplan erstellen | 5d | 2026-03-06 | 2026-03-12 | 5 |
| 7 | Objektstrukturplan erstellen | 5d | 2026-03-06 | 2026-03-12 | 6 |
| 8 | Einrichtung von MS Projects | 3d | 2026-03-13 | 2026-03-17 | 7 |
| 9 | Grobplanung abgeschlossen | 0d | 2026-03-20 | 2026-03-20 | 8 |
| 11 | Systemarchitektur definieren | 4d | 2026-03-20 | 2026-03-25 |  |
| 12 | Datenbank-Design erstellen | 8d | 2026-03-27 | 2026-04-07 |  |
| 13 | Tabellenstruktur PostgreSQL erstellen | 4d | 2026-04-07 | 2026-04-10 |  |
| 14 | Schnittstellen PHP/DB definieren | 3d | 2026-04-10 | 2026-04-14 |  |
| 15 | Systemdesign abgeschlossen | 0d | 2026-04-14 | 2026-04-14 |  |
| 17 | Datenbank in Docker einrichten | 4d | 2026-04-14 | 2026-04-17 |  |
| 18 | Tabellen implementieren | 3d | 2026-04-17 | 2026-04-21 |  |
| 19 | PHP Verbindung zur DB | 4d | 2026-04-21 | 2026-04-24 |  |
| 20 | Speicherung der Zustände | 4d | 2026-04-28 | 2026-05-01 |  |
| 21 | Historie erstellen | 3d | 2026-05-01 | 2026-05-05 |  |
| 22 | Backend fertig | 0d | 2026-05-05 | 2026-05-05 |  |
| 24 | HTML Struktur erstellen | 4d | 2026-05-05 | 2026-05-08 |  |
| 25 | Layout (Raum, Elemente) | 3d | 2026-05-08 | 2026-05-12 |  |
| 26 | CSS implementieren | 4d | 2026-05-12 | 2026-05-15 |  |
| 27 | Responsive Design | 3d | 2026-05-15 | 2026-05-19 |  |
| 28 | Javascript Grundlogik | 4d | 2026-05-19 | 2026-05-22 |  |
| 29 | Licht AN/AUS funktion | 4d | 2026-05-26 | 2026-05-29 |  |
| 30 | Statusanzeige einbauen | 4d | 2026-05-26 | 2026-05-29 |  |
| 31 | Historie anzeigen | 4d | 2026-05-26 | 2026-05-29 |  |
| 32 | Frontend fertig | 0d | 2026-05-29 | 2026-05-29 |  |
| 34 | Shellys einrichten | 4d | 2026-05-12 | 2026-05-15 |  |
| 35 | Nertwerkverbindung der Shellys prüfen | 3d | 2026-05-15 | 2026-05-19 |  |
| 36 | Shelly per PHP ansteuern | 4d | 2026-05-19 | 2026-05-22 |  |
| 37 | Schaltbefehle testen | 4d | 2026-05-26 | 2026-05-29 |  |
| 38 | Shellys Anbindung fertig | 0d | 2026-05-29 | 2026-05-29 |  |
| 40 | Frontend mit Backend verbindung | 4d | 2026-06-02 | 2026-06-05 |  |
| 41 | Website mit Shelly-Steuerung verbindung | 4d | 2026-06-02 | 2026-06-05 |  |
| 42 | Aufrufe testen | 1d | 2026-06-05 | 2026-06-05 |  |
| 43 | System integriert | 0d | 2026-06-05 | 2026-06-05 |  |
| 45 | Funktionstest durchführen | 3d | 2026-06-05 | 2026-06-09 |  |
| 46 | Tests/Bugs beheben | 3d | 2026-06-05 | 2026-06-09 |  |
| 47 | System getestet | 0d | 2026-06-09 | 2026-06-09 |  |
| 49 | Dokumentationen überprüfen | 3d | 2026-06-05 | 2026-06-09 |  |
| 50 | Präsentation vorbereiten | 3d | 2026-06-05 | 2026-06-09 |  |
| 51 | Demo vorbereiten | 3d | 2026-06-05 | 2026-06-09 |  |
| 52 | Projekt abgeschlossen | 0d | 2026-06-09 | 2026-06-09 |  |

## Version 2 (saved 2026-11-15)

Note of the change: Dokumentation: Pflichtenheft, Arbeitspakete, PSP/OSP und Zeitplan

Last finish 2026-06-09 → 2027-01-25 (+230d). Complete tasks 0 → 13.

Added:

| ID | Task | Duration | Start | Finish | Predecessors | Resources |
| --- | --- | --- | --- | --- | --- | --- |
| 1 | Projektidee festlegen & beschreiben | 1.38d | 2026-09-07 08:00 A | 2026-09-21 11:00 A |  | Julian; Alexander; Leon |
| 4 | Entwicklungsumgebung einrichten | 0.12d | 2026-09-28 08:00 A | 2026-09-28 09:00 A | 2 | Julian; Alexander; Leon |
| 15 | Empfänger montieren & Positionen vermessen | 0.38d | 2026-11-23 09:00 | 2026-11-27 09:00 | 11 | Leon |
| 16 | M3 Hardware einsatzbereit | 0d | 2026-11-30 11:00 | 2026-11-30 11:00 | 13, 14 |  |
| 17 | Referenzmessungen durchführen | 0.5d | 2026-12-04 08:00 | 2026-12-07 11:00 | 15, 16 | Alexander; Leon |
| 20 | M4 Ortung kalibriert | 0d | 2026-12-11 09:00 | 2026-12-11 09:00 | 18 |  |
| 23 | Docker-Umgebung aufsetzen | 0.12d | 2026-11-20 08:00 | 2026-11-20 09:00 | 11 | Julian |
| 24 | Backend: Anmeldung & Rollen | 0.38d | 2026-11-23 08:00 | 2026-11-23 11:00 | 22, 23 | Julian |
| 25 | Backend: Geräteverwaltung & Suche | 0.38d | 2026-11-27 08:00 | 2026-11-30 10:00 | 24 | Julian |
| 26 | Backend: Ausleihe, Rückgabe & Historie | 0.25d | 2026-11-30 10:00 | 2026-12-04 09:00 | 25 | Julian |
| 27 | Backend: Kalender & Benutzerverwaltung | 0.12d | 2026-12-07 08:00 | 2026-12-07 09:00 | 26 | Julian |
| 34 | Schnittstelle location.php umsetzen | 0.25d | 2026-12-07 09:00 | 2026-12-07 11:00 | 19, 22 | Julian |
| 38 | Standortverlauf speichern | 0.12d | 2026-12-18 08:00 | 2026-12-18 09:00 | 37 | Alexander |
| 39 | Gesamtsystem testen | 0.38d | 2026-12-21 08:00 | 2026-12-21 11:00 | 36, 38, 32 | Julian; Alexander; Leon |
| 51 | M8 Dokumentation abgeschlossen | 0d | 2027-01-22 09:00 | 2027-01-22 09:00 | 48, 49, 50 |  |
| 52 | Endpräsentation vorbereiten & halten | 0.62d | 2027-01-18 09:00 | 2027-01-25 10:00 | 46 | Julian; Alexander; Leon |
| 53 | Projekt übergeben | 0.12d | 2027-01-25 10:00 | 2027-01-25 11:00 | 52, 51 | Julian |
| 54 | M9 Projektabschluss | 0d | 2027-01-25 11:00 | 2027-01-25 11:00 | 53 |  |

Removed: 6 Produktstrukturplan erstellen; 37 Schaltbefehle testen; 38 Shellys Anbindung fertig; 40 Frontend mit Backend verbindung; 41 Website mit Shelly-Steuerung verbindung; 42 Aufrufe testen; 43 System integriert; 45 Funktionstest durchführen; 46 Tests/Bugs beheben; 47 System getestet; 49 Dokumentationen überprüfen; 50 Präsentation vorbereiten; 51 Demo vorbereiten; 52 Projekt abgeschlossen

Changed:

| ID | Task | Start | Finish | Duration | Complete | Predecessors | Other |
| --- | --- | --- | --- | --- | --- | --- | --- |
| 2 | M1 Projektidee fixiert | 2026-02-13 → 2026-09-21 11:00 (+220d) | 2026-02-19 → 2026-09-21 11:00 (+214d) | 5d → 0d |  | none → 1 | was named Projektidee fixiert; resources Alexander; Julian; Philipp; Felix → none |
| 3 | Kommunikationsverzeichnis erstellen | 2026-02-13 → 2026-09-25 08:00 A (+224d) | 2026-02-23 → 2026-09-25 09:00 A (+214d) | 7d → 0.12d | 0% → 100% |  | was named Kommunikatoinsverzeichnis erstellen |
| 5 | Pflichtenheft erstellen | 2026-02-20 → 2026-09-28 09:00 A (+220d) | 2026-02-27 → 2026-10-09 09:00 A (+224d) | 6d → 0.88d | 0% → 100% | 3 → 2 | resources Alexander; Felix; Julian; Philipp → Alexander; Leon |
| 6 | Projektanalyse durchführen | 2026-02-27 → 2026-09-28 09:00 A (+213d) | 2026-03-06 → 2026-10-09 09:00 A (+217d) | 6d → 0.88d | 0% → 100% | 5 → 2 | resources Alexander; Felix; Julian; Philipp → Julian |
| 7 | Produkt- & Objektstrukturplan erstellen | 2026-03-06 → 2026-10-12 08:00 A (+220d) | 2026-03-12 → 2026-10-16 09:00 A (+218d) | 5d → 0.5d | 0% → 100% | Produktstrukturplan erstellen → 5 | was named Objektstrukturplan erstellen; resources Alexander; Felix; Philipp → Alexander |
| 8 | BLE-Tags auswählen & bestellen | 2026-03-13 → 2026-10-12 08:00 A (+213d) | 2026-03-17 → 2026-10-16 09:00 A (+213d) | 3d → 0.5d | 0% → 100% | 7 → 5 | was named Einrichtung von MS Projects; resources Alexander → Leon |
| 9 | PSP & Arbeitspakete erstellen | 2026-02-13 → 2026-10-19 08:00 A (+248d) | 2026-02-13 → 2026-10-19 11:00 A (+248d) | 1d → 0.38d | 0% → 100% | 2 → 7 | was named Einrichtung von GitHUB; resources Alexander → Julian |
| 10 | Projektzeitplan in MS Project erstellen | 2026-03-20 → 2026-10-23 08:00 A (+217d) | 2026-03-20 → 2026-10-23 09:00 A (+217d) | 0d → 0.12d | 0% → 100% | 8 → 9 | was named Grobplanung abgeschlossen; resources none → Julian |
| 11 | M2 Planung abgeschlossen | 2026-03-20 → 2026-10-23 09:00 (+217d) | 2026-03-25 → 2026-10-23 09:00 (+212d) | 4d → 0d |  | none → 3, 6, 10, 8, 4 | was named Systemarchitektur definieren; resources Alexander; Julian; Philipp; Felix → none |
| 13 | BLE-Tags konfigurieren | 2026-03-27 → 2026-11-23 08:00 (+241d) | 2026-04-07 → 2026-11-23 09:00 (+230d) | 8d → 0.12d |  | none → 11 | was named Datenbank-Design erstellen; resources Felix; Philipp; Julian; Alexander → Leon |
| 14 | BLE-Scan & RSSI-Messung programmieren | 2026-04-07 → 2026-11-23 08:00 (+230d) | 2026-04-10 → 2026-11-30 09:00 (+234d) | 4d → 0.62d |  | none → 11 | was named Tabellenstruktur PostgreSQL erstellen; resources Felix; Philipp; Alexander; Julian → Alexander |
| 18 | TxPower & n bestimmen, Messprotokoll erstellen | 2026-04-14 → 2026-12-11 08:00 (+241d) | 2026-04-17 → 2026-12-11 09:00 (+238d) | 4d → 0.12d |  | none → 17 | was named Datenbank in Docker einrichten; resources Alexander; Felix; Philipp; Julian → Alexander |
| 19 | WLAN & HTTP-Übertragung programmieren | 2026-04-10 → 2026-11-30 09:00 (+234d) | 2026-04-14 → 2026-11-30 11:00 (+230d) | 3d → 0.25d |  | none → 14 | was named Schnittstellen PHP/DB definieren; resources Felix; Philipp; Alexander; Julian → Alexander |
| 22 | Datenbankmodell & Init-Skript erstellen | 2026-04-14 → 2026-11-16 08:00 (+216d) | 2026-04-14 → 2026-11-16 11:00 (+216d) | 0d → 0.38d |  | none → 11 | was named Systemdesign abgeschlossen; resources none → Julian |
| 28 | Frontend: HTML-Struktur & Layout | 2026-04-17 → 2026-11-06 08:00 A (+203d) | 2026-04-21 → 2026-11-06 09:00 A (+199d) | 3d → 0.12d | 0% → 100% | none → 11 | was named Tabellen implementieren; resources Alexander; Chef; Julian; Philipp → Leon |
| 29 | Frontend: Design mit CSS | 2026-05-12 → 2026-11-09 08:00 A (+181d) | 2026-05-15 → 2026-11-09 10:00 A (+178d) | 4d → 0.25d | 0% → 100% | none → 28 | was named Shellys einrichten; resources Alexander; Felix; Julian; Philipp → Leon |
| 30 | Frontend: JavaScript-Grundlogik | 2026-05-15 → 2026-11-09 10:00 A (+178d) | 2026-05-19 → 2026-11-09 11:00 A (+174d) | 3d → 0.12d | 0% → 100% | none → 29 | was named Nertwerkverbindung der Shellys prüfen; resources Alexander; Felix; Julian; Philipp → Leon |
| 31 | Frontend: Seiten Anmeldung, Geräte & Ausleihe | 2026-05-19 → 2026-11-13 08:00 A (+178d) | 2026-05-22 → 2026-11-13 09:00 A (+175d) | 4d → 0.12d | 0% → 100% | none → 30 | was named Shelly per PHP ansteuern; resources Alexander; Felix; Julian; Philipp → Leon |
| 32 | M5 Webanwendung fertig | 2026-04-21 → 2026-12-14 11:00 (+237d) | 2026-04-24 → 2026-12-14 11:00 (+234d) | 4d → 0d |  | none → 27, 31 | was named PHP Verbindung zur DB; resources Alexander; Felix; Julian; Philipp → none |
| 35 | RSSI-Umrechnung implementieren | 2026-04-28 → 2026-12-14 08:00 (+230d) | 2026-05-01 → 2026-12-14 09:00 (+227d) | 4d → 0.12d |  | none → 20, 34 | was named Speicherung der Zustände; resources Alexander; Felix; Julian; Philipp → Julian |
| 36 | Raumkarte im Dashboard anzeigen | 2026-05-01 → 2026-12-11 08:00 (+224d) | 2026-05-05 → 2026-12-14 10:00 (+223d) | 3d → 0.38d |  | none → 34, 31 | was named Historie erstellen; resources Alexander; Felix; Julian; Philipp → Leon |
| 37 | Trilateration programmieren | 2026-05-05 → 2026-12-14 09:00 (+223d) | 2026-05-05 → 2026-12-14 11:00 (+223d) | 0d → 0.25d |  | none → 35 | was named Backend fertig; resources none → Alexander |
| 40 | M6 System integriert | 2026-05-05 → 2026-12-21 11:00 (+230d) | 2026-05-08 → 2026-12-21 11:00 (+227d) | 4d → 0d |  | none → 39 | was named HTML Struktur erstellen; resources Alexander; Felix; Julian; Philipp → none |
| 42 | Modul- & Funktionstests durchführen | 2026-05-08 → 2027-01-08 08:00 (+245d) | 2026-05-12 → 2027-01-11 09:00 (+244d) | 3d → 0.25d |  | none → 40 | was named Layout (Raum, Elemente); resources Alexander; Felix; Julian; Philipp → Leon |
| 43 | Genauigkeitstest durchführen | 2026-05-12 → 2027-01-08 08:00 (+241d) | 2026-05-15 → 2027-01-11 09:00 (+241d) | 4d → 0.25d |  | none → 40 | was named CSS implementieren; resources Alexander; Chef; Julian; Philipp → Alexander |
| 44 | Fehler beheben & optimieren | 2026-05-15 → 2027-01-11 09:00 (+241d) | 2026-05-19 → 2027-01-11 11:00 (+237d) | 3d → 0.25d |  | none → 42, 43 | was named Responsive Design; resources Alexander; Felix; Julian; Philipp → Julian |
| 45 | Testprotokoll erstellen | 2026-05-19 → 2027-01-15 08:00 (+241d) | 2026-05-22 → 2027-01-15 09:00 (+238d) | 4d → 0.12d |  | none → 44 | was named Javascript Grundlogik; resources Alexander; Chef; Julian; Philipp → Leon |
| 46 | M7 Systemtest abgeschlossen | 2026-05-26 → 2027-01-18 08:00 (+237d) | 2026-05-29 → 2027-01-18 08:00 (+234d) | 4d → 0d |  | none → 45 | was named Licht AN/AUS funktion; resources Alexander; Felix; Julian; Philipp → none |
| 48 | Technische Dokumentation erstellen | 2026-05-26 → 2027-01-11 09:00 (+230d) | 2026-05-29 → 2027-01-15 09:00 (+231d) | 4d → 0.38d |  | none → 40 | was named Statusanzeige einbauen; resources Alexander; Felix; Julian; Philipp → Alexander |
| 49 | Benutzeranleitung erstellen | 2026-05-26 → 2027-01-11 09:00 (+230d) | 2026-05-29 → 2027-01-11 11:00 (+227d) | 4d → 0.25d |  | none → 40 | was named Historie anzeigen; resources Alexander; Chef; Julian; Philipp → Leon |
| 50 | Pflichtenheft & Statusbericht aktualisieren | 2026-05-29 → 2027-01-18 08:00 (+234d) | 2026-05-29 → 2027-01-18 09:00 (+234d) | 0d → 0.12d |  | none → 45 | was named Frontend fertig; resources none → Julian |
